Schedule from MS Project, 2025-09-01 to 2026-03-03, costs in р..

## Calendars

- Стандартный: Mon-Fri 09:00-13:00, 14:00-18:00; Sat-Sun off. Exceptions (off unless hours are given): 2025-11-04 (День народного единства), 2025-12-31 (предпраздничный), 2026-01-01 to 2026-01-08 (новогодние каникулы), 2026-02-23 (23 февраля).

## Resources

| Resource | Rate | Cost per use |
| --- | --- | --- |
| Руководитель проекта | 562.5 |  |
| Бизнес-аналитик | 468.75 |  |
| Проектировщик БД | 500 |  |
| Backend-разработчик | 531.25 |  |
| Frontend-разработчик | 500 |  |
| Тестировщик | 375 |  |
| Системный администратор | 437.5 |  |
| Техник | 312.5 |  |
| Специалист по внедрению | 406.25 |  |
| Технический писатель | 343.75 |  |
| Директор автосервиса | 625 |  |
| Мастер-приемщик | 343.75 |  |
| Кладовщик | 281.25 |  |
| Бухгалтер | 312.5 |  |
| Сервер | 85000 |  |
| Рабочая станция | 45000 |  |
| Принтер документов | 18000 |  |
| Сканер штрихкодов | 12000 |  |
| Резервное хранилище | 20000 |  |
| Домен и SSL-сертификат | 7000 |  |
| Интернет и связь |  | 3000 |
| Обучающие материалы |  | 5000 |
| Расходные материалы |  | 3000 |
| Лицензии офисного ПО | 15000 |  |
| дире |  |  |
| Помощник аналитика | 375 |  |
| Frontend-разработчик 2 | 437.5 |  |
| Backend-разработчик 2 | 468.75 |  |

## Schedule

| ID | WBS | Task | Type | Duration | Start | Finish | Predecessors | Total slack | Resources | Work | Cost |
| --- | --- | --- | --- | --- | --- | --- | --- | --- | --- | --- | --- |
| 1 | 1 | Начало проекта | milestone | 0d | 2025-09-01 | 2025-09-01 |  | 0d |  |  |  |
| 2 | 2 | **Обследование и сбор требований** |  | 23d | 2025-09-01 | 2025-10-01 |  | 0d |  | 500h | 250,833.33 |
| 3 | 2.1 | Анализ текущей работы автосервиса |  | 6.67d | 2025-09-01 | 2025-09-26 | 1 | 0d | Бизнес-аналитик; Мастер-приемщик [30%]; Кладовщик [20%] | 40h | 16,750 |
| 4 | 2.2 | Сбор требований пользователей |  | 16.67d | 2025-09-01 | 2025-09-23 | 1 | 3.33d | Бизнес-аналитик; Директор автосервиса [30%]; Мастер-приемщик [30%]; Бухгалтер [20%] | 240h | 109,583.33 |
| 5 | 2.3 | Анализ аналогичных информационных систем |  | 20d | 2025-09-01 | 2025-09-26 | 1 | 0d | Руководитель проекта [30%]; Интернет и связь; Помощник аналитика [70%] | 160h | 72,000 |
| 6 | 2.4 | Согласование функциональных требований |  | 3d | 2025-09-29 | 2025-10-01 | 3, 4, 5 | 0d | Руководитель проекта; Бизнес-аналитик; Директор автосервиса [50%] | 60h | 52,500 |
| 7 | 2.5 | Обследование завершено | milestone | 0d | 2025-10-01 | 2025-10-01 | 6 | 0d |  |  |  |
| 8 | 3 | **Проектирование информационной системы** |  | 10d | 2025-10-02 | 2025-10-15 |  | 0d |  | 231.2h | 116,050 |
| 9 | 3.1 | Проектирование архитектуры системы |  | 5d | 2025-10-02 | 2025-10-08 | 7 | 0d | Руководитель проекта [50%]; Backend-разработчик [50%]; Frontend-разработчик [50%] | 60h | 31,875 |
| 10 | 3.2 | Проектирование структуры базы данных |  | 6d | 2025-10-02 | 2025-10-09 | 7 | 4d | Проектировщик БД; Backend-разработчик [50%] | 72h | 36,750 |
| 11 | 3.3 | Проектирование интерфейсов пользователя |  | 5d | 2025-10-09 | 2025-10-15 | 9 | 0d | Frontend-разработчик; Бизнес-аналитик [50%]; Мастер-приемщик [20%] | 68h | 32,125 |
| 12 | 3.4 | Проектирование ролей и прав доступа |  | 4d | 2025-10-09 | 2025-10-14 | 9 | 1d | Системный администратор [50%]; Проектировщик БД [50%]; Руководитель проекта [30%] | 31.2h | 15,300 |
| 13 | 3.5 | Проектирование завершено | milestone | 0d | 2025-10-15 | 2025-10-15 | 10, 11, 12 | 0d |  |  |  |
| 14 | 4 | **Разработка базы данных** |  | 15.62d | 2025-10-16 | 2025-11-07 |  | 0d |  | 170.4h | 80,921.15 |
| 15 | 4.1 | Создание таблиц и связей базы данных |  | 7d | 2025-10-16 | 2025-10-24 | 13 | 0d | Проектировщик БД; Backend-разработчик [50%] | 84h | 42,875 |
| 16 | 4.2 | Создание справочников услуг и запчастей |  | 4.62d | 2025-10-27 | 2025-10-31 | 15 | 4d | Проектировщик БД [70%]; Кладовщик [30%]; Мастер-приемщик [30%] | 48h | 19,846.15 |
| 17 | 4.3 | Настройка ограничений и прав доступа |  | 8d | 2025-10-27 | 2025-11-07 | 15 | 0d | Проектировщик БД [70%]; Системный администратор [50%] | 38.4h | 18,200 |
| 18 | 4.4 | Разработка базы данных завершена | milestone | 0d | 2025-11-07 | 2025-11-07 | 16, 17 | 0d |  |  |  |
| 19 | 5 | **Разработка программного обеспечения** |  | 36.62d | 2025-11-07 | 2025-12-30 |  | 0d |  | 556.8h | 281,125 |
| 20 | 5.1 | Разработка серверной части системы |  | 10d | 2025-11-07 | 2025-11-21 | 18 | 2d | Backend-разработчик; Проектировщик БД [30%] | 104h | 54,500 |
| 21 | 5.2 | Разработка клиентской части системы |  | 12d | 2025-11-07 | 2025-11-25 | 18 | 0d | Frontend-разработчик; Бизнес-аналитик [30%] | 124.8h | 61,500 |
| 22 | 5.3 | Разработка модуля клиентов и автомобилей |  | 5d | 2025-11-25 | 2025-12-02 | 20, 21 | 0d | Backend-разработчик [70%]; Frontend-разработчик [70%] | 56h | 28,875 |
| 23 | 5.4 | Разработка модуля заказ-нарядов |  | 7d | 2025-12-02 | 2025-12-11 | 22 | 6.62d | Backend-разработчик; Frontend-разработчик [70%] | 95.2h | 49,350 |
| 24 | 5.5 | Разработка модуля услуг и запчастей |  | 7d | 2025-12-02 | 2025-12-22 | 22 | 0d | Backend-разработчик 2; Frontend-разработчик 2 [70%] | 95.2h | 43,400 |
| 25 | 5.6 | Разработка модуля отчетности |  | 6d | 2025-12-22 | 2025-12-30 | 23, 24 | 0d | Backend-разработчик; Frontend-разработчик [50%]; Директор автосервиса [20%] | 81.6h | 43,500 |
| 26 | 5.7 | Разработка системы завершена | milestone | 0d | 2025-12-30 | 2025-12-30 | 25 | 0d |  |  |  |

| ID | WBS | Task | Type | Duration | Start | Finish | Predecessors | Total slack | Free slack | Constraint | Deadline | Resources | Work | Cost |
| --- | --- | --- | --- | --- | --- | --- | --- | --- | --- | --- | --- | --- | --- | --- |
| 27 | 6 | **Тестирование системы** |  | 18.16d | 2025-12-30 | 2026-02-03 |  | 0d |  |  |  |  | 235.2h | 106,073.68 |
| 28 | 6.1 | Модульное тестирование |  | 5d | 2025-12-30 | 2026-01-15 | 26 | 0d |  |  |  | Тестировщик; Backend-разработчик [30%]; Frontend-разработчик [30%] | 64h | 27,375 |
| 29 | 6.2 | Интеграционное тестирование |  | 5d | 2026-01-15 | 2026-01-22 | 28 | 0d |  |  |  | Тестировщик; Backend-разработчик [50%]; Frontend-разработчик [50%] | 64h | 27,375 |
| 30 | 6.3 | Исправление выявленных ошибок |  | 5.16d | 2026-01-22 | 2026-01-29 | 29 | 3d |  |  |  | Backend-разработчик [70%]; Frontend-разработчик [70%]; Тестировщик [50%] | 78.4h | 37,523.68 |
| 31 | 6.4 | Подготовка тестовой отчетности |  | 6d | 2026-01-22 | 2026-02-03 | 29 | 0d |  |  |  | Тестировщик [70%]; Технический писатель [50%] | 28.8h | 13,800 |
| 32 | 6.5 | Тестирование завершено | milestone | 0d | 2026-02-03 | 2026-02-03 | 30, 31 | 0d |  |  |  |  |  |  |
| 33 | 7 | **Подготовка инфраструктуры** |  | 16.33d | 2025-10-16 | 2025-11-10 |  | 56.06d |  |  |  |  | 103.2h | 333,825 |
| 34 | 7.1 | Подготовка сервера и рабочих мест |  | 5d | 2025-10-16 | 2025-10-22 | 13 | 56.06d | 0d |  |  | Системный администратор; Техник; Сервер; Рабочая станция [300%]; Принтер документов; Сканер штрихкодов | 48h | 268,000 |
| 35 | 7.2 | Установка СУБД и программного окружения |  | 4d | 2025-10-23 | 2025-10-31 | 34 | 56.06d | 0d |  |  | Системный администратор; Backend-разработчик [30%]; Лицензии офисного ПО; Домен и SSL-сертификат | 31.2h | 36,325 |
| 36 | 7.3 | Настройка резервного копирования |  | 3.33d | 2025-11-05 | 2025-11-10 | 35FS+1d | 56.06d | 0d |  |  | Системный администратор; Техник [50%]; Резервное хранилище | 24h | 29,500 |
| 37 | 7.4 | Инфраструктура готова | milestone | 0d | 2025-11-10 | 2025-11-10 | 36 | 56.06d | 54.06d |  |  |  |  |  |
| 38 | 8 | **Ввод начальных данных** |  | 15d | 2025-11-07 | 2025-11-28 |  | 42.54d |  |  |  |  | 170.4h | 64,375 |
| 39 | 8.1 | Подготовка справочников услуг и запчастей |  | 5d | 2025-11-07 | 2025-11-14 | 18 | 42.54d | 0d |  |  | Кладовщик [50%]; Мастер-приемщик [50%]; Бизнес-аналитик [50%] | 60h | 21,875 |
| 40 | 8.2 | Ввод клиентов и автомобилей |  | 7d | 2025-11-14 | 2025-11-25 | 39 | 42.54d | 0d |  |  | Специалист по внедрению; Мастер-приемщик [50%] | 84h | 32,375 |
| 41 | 8.3 | Ввод начальных остатков запчастей | milestone | 0d | 2025-11-14 | 2025-11-14 | 39 | 49.77d | 7d |  |  | Специалист по внедрению [70%]; Кладовщик [70%] |  |  |
| 42 | 8.4 | Проверка корректности данных |  | 3d | 2025-11-25 | 2025-11-28 | 40, 41 | 42.77d | 0d |  |  | Бизнес-аналитик [50%]; Кладовщик [30%]; Мастер-приемщик [30%] | 26.4h | 10,125 |
| 43 | 8.5 | Начальные данные введены | milestone | 0d | 2025-11-28 | 2025-11-28 | 42 | 42.77d | 0d |  |  |  |  |  |
| 44 | 9 | **Обучение персонала** |  | 52.77d | 2025-11-18 | 2026-02-10 |  | 0d |  |  |  |  | 160h | 85,750 |
| 45 | 9.1 | Обучение администратора системы |  | 3d | 2026-02-03 | 2026-02-06 | 32, 37 | 2d |  |  |  | Системный администратор; Специалист по внедрению; Обучающие материалы | 48h | 25,250 |
| 46 | 9.2 | Обучение мастера-приемщика |  | 5.62d | 2025-11-18 | 2025-12-02 | 40SS+2d | 42.54d |  |  |  | Специалист по внедрению; Мастер-приемщик; Обучающие материалы | 48h | 23,000 |
| 47 | 9.3 | Обучение кладовщика |  | 2d | 2025-11-28 | 2025-12-02 | 43 | 42.77d |  |  |  | Специалист по внедрению; Кладовщик; Обучающие материалы | 32h | 16,000 |
| 48 | 9.4 | Обучение руководителя работе с отчетами |  | 4d | 2026-02-03 | 2026-02-10 | 32 | 0d |  |  |  | Специалист по внедрению; Директор автосервиса; Обучающие материалы | 32h | 21,500 |
| 49 | 9.5 | Обучение завершено | milestone | 0d | 2026-02-10 | 2026-02-10 | 45, 46, 47, 48 | 0d |  |  |  |  |  |  |
| 50 | 10 | **Внедрение и сдача проекта** |  | 14d | 2026-02-10 | 2026-03-03 |  | 0d |  |  |  |  | 170.4h | 89,525 |
| 51 | 10.1 | Опытная эксплуатация системы |  | 7d | 2026-02-10 | 2026-02-19 | 49, 37, 43 | 0d |  | start no earlier than 2025-12-01 | 2026-05-03 | Специалист по внедрению [70%]; Системный администратор [50%]; Мастер-приемщик [50%]; Кладовщик [30%]; Расходные материалы | 112h | 45,525 |
| 52 | 10.2 | Корректировка по результатам опытной эксплуатации |  | 4d | 2026-02-24 | 2026-03-02 | 51FS+2d | 0d |  |  |  | Backend-разработчик [50%]; Frontend-разработчик [50%]; Тестировщик [50%] | 48h | 22,500 |
| 53 | 10.3 | Подготовка акта ввода в эксплуатацию |  | 1d | 2026-03-02 | 2026-03-03 | 52 | 0d |  |  |  | Руководитель проекта [50%]; Технический писатель [50%]; Директор автосервиса [30%] | 10.4h | 21,500 |
| 54 | 10.4 | Передача системы в эксплуатацию завершена | milestone | 0d | 2026-03-03 | 2026-03-03 | 53 | 0d |  |  |  |  |  |  |
| 55 | 11 | Конец проекта | milestone | 0d | 2026-03-03 | 2026-03-03 | 54 | 0d |  |  |  |  |  |  |
